# BarrocIT_planning

Schedule from MS Project, 2015-09-07 to 2015-11-03, 5 hours a day, A marks actual dates.

## Calendars

- Standaard: Mon 08:40-12:40; Tue 09:20-12:00; Wed-Fri 08:40-12:40; Sat-Sun off. Exceptions (off unless hours are given): 2015-10-24 to 2015-11-01 (Herfstvakantie).

## Resources

| Resource |
| --- |
| Tom Smits |
| Steven Logghe |
| Santino Bonora |

## Schedule

| ID | WBS | Task | Type | Duration | Start | Finish | Predecessors | Complete | Remaining | Total slack | Free slack | Deadline | Resources | Work | Actual work |
| --- | --- | --- | --- | --- | --- | --- | --- | --- | --- | --- | --- | --- | --- | --- | --- |
| 1 | 1 | Start | milestone, manual | 0d | 2015-09-07 A | 2015-09-07 A |  | 100% |  |  |  |  |  |  |  |
| 2 | 2 | **Inception Phase** |  | 10.52d | 2015-09-07 A | 2015-09-25 |  | 73% | 2.84d | 1.81d | 0d |  |  | 92.2h | 62.5h |
| 3 | 2.1 | Interview voorbereiden |  | 1h | 2015-09-07 A | 2015-09-07 A |  | 100% |  |  |  |  | Santino Bonora; Steven Logghe; Tom Smits | 3h | 3h |
| 4 | 2.2 | Interview houden en gesprekverslag terug koppelen |  | 0.3h | 2015-09-07 | 2015-09-07 | 3 |  |  | 0.3d | 0d |  | Steven Logghe; Santino Bonora; Tom Smits | 0.9h |  |
| 5 | 2.3 | Hernieuwde opdracht |  | 5h | 2015-09-07 A | 2015-09-08 | 4 | 30% | 3.5h | 0.36d | 0d | 2015-10-30 | Steven Logghe | 5h | 1.5h |
| 6 | 2.4 | Prototype van schermen gebaseerd op interview |  | 2h | 2015-09-08 A | 2015-09-09 | 5 | 90% | 0.2h | 1.26d | 0d | 2015-09-30 | Tom Smits | 2h | 1.8h |
| 7 | 2.5 | Offerte uitbrengen |  | 7h | 2015-09-09 A | 2015-09-11 | 6 | 90% | 0.7h | 9.27d |  | 2015-09-30 | Santino Bonora | 7h | 6.3h |
| 8 | 2.6 | Agenda en notulen van elke vergadering |  | 0.3h | 2015-09-11 A | 2015-09-11 A | 7 | 100% |  |  |  |  | Santino Bonora | 0.3h | 0.3h |
| 9 | 2.7 | Plan van aanpak (incl risico analyse) |  | 14h | 2015-09-11 A | 2015-09-17 | 8 | 95% | 0.7h | 2.4d | 0.6d | 2015-09-30 | Steven Logghe; Santino Bonora | 28h | 26.6h |
| 10 | 2.8 | Globale planning voor het gehele project (MS Project) |  | 10h | 2015-09-17 A | 2015-09-22 | 9 | 90% | 1h | 3.81d |  |  | Santino Bonora; Tom Smits | 20h | 18h |
| 11 | 2.9 | Gedetailleerde taakverdeling van het functioneel ontwerp in MS Project |  | 2h | 2015-09-22 A | 2015-09-23 A | 10 | 100% |  |  |  |  | Tom Smits | 2h | 2h |
| 12 | 2.10 | Use-case diagram |  | 2h | 2015-09-23 A | 2015-09-23 | 11 | 50% | 1h | 1.81d | 0d | 2015-09-30 | Steven Logghe; Santino Bonora; Tom Smits | 6h | 3h |
| 13 | 2.11 | Use-case templates |  | 2h | 2015-09-23 | 2015-09-24 | 12 |  |  | 1.81d | 0d | 2015-09-30 | Steven Logghe; Santino Bonora; Tom Smits | 6h |  |
| 14 | 2.12 | Activiteitendiagrammen |  | 4h | 2015-09-24 | 2015-09-25 | 13 |  |  | 1.81d |  | 2015-09-30 | Steven Logghe; Santino Bonora; Tom Smits | 12h |  |
| 15 | 3 | mijlpaal 1: inception |  | 0.8d | 2015-09-07 | 2015-09-07 |  |  |  | 26.13d |  |  |  |  |  |
| 16 | 4 | **Elaboration Phase** |  | 4.8d | 2015-09-25 | 2015-10-05 | 2 |  |  | 1.81d | 0d |  |  | 50h |  |
| 17 | 4.1 | Gedetailleerde taakverdeling van het technische ontwerp in MS Project |  | 2h | 2015-09-25 | 2015-09-25 |  |  |  | 1.81d | 0d |  | Tom Smits | 2h |  |
| 18 | 4.2 | Modeldictionary |  | 3h | 2015-09-25 | 2015-09-28 | 17 |  |  | 1.81d | 0d |  | Steven Logghe; Santino Bonora; Tom Smits | 9h |  |
| 19 | 4.3 | Klassendiagram |  | 3h | 2015-09-28 | 2015-09-29 | 18 |  |  | 1.81d | 0d |  | Santino Bonora | 3h |  |
| 20 | 4.4 | Ontwerp datadictionary |  | 4h | 2015-09-29 | 2015-09-30 | 19 |  |  | 1.81d | 0d |  | Steven Logghe; Santino Bonora; Tom Smits | 12h |  |
| 21 | 4.5 | Sequentie diagrammen |  | 4h | 2015-09-30 | 2015-10-01 | 20 |  |  | 1.81d | 0d |  | Steven Logghe; Santino Bonora; Tom Smits | 12h |  |
| 22 | 4.6 | Overzicht taakverdeling inrichten van de ontwikkelomgeving |  | 4h | 2015-10-01 | 2015-10-02 | 21 |  |  | 1.81d | 0d |  | Steven Logghe; Santino Bonora | 8h |  |
| 23 | 4.7 | Overzicht van de gebruikte hard- en software van de ingerichte ontwikkelomgeving |  | 4h | 2015-10-02 | 2015-10-05 | 22 |  |  | 1.81d |  |  | Tom Smits | 4h |  |
| 24 | 5 | mijlpaal 2: Construction | milestone | 0d | 2015-09-07 | 2015-09-07 |  |  |  | 26.93d |  |  |  |  |  |

| ID | WBS | Task | Type | Duration | Start | Finish | Predecessors | Total slack | Free slack | Constraint | Resources | Work |
| --- | --- | --- | --- | --- | --- | --- | --- | --- | --- | --- | --- | --- |
| 25 | 6 | **Construction Phase** |  | 5.48d | 2015-10-05 | 2015-10-14 | 16 | 1.73d | 0d |  |  | 45h |
| 26 | 6.1 | Genormaliseerd databaseontwerp |  | 3h | 2015-10-05 | 2015-10-06 |  | 1.81d | 0d |  | Tom Smits | 3h |
| 27 | 6.2 | Defenitieve datadictionery |  | 3h | 2015-10-06 | 2015-10-07 | 26 | 1.81d | 0d |  | Steven Logghe | 3h |
| 28 | 6.3 | De database (gebouwd) |  | 3h | 2015-10-07 | 2015-10-08 | 27 | 1.81d | 0d |  | Santino Bonora; Tom Smits | 6h |
| 29 | 6.4 | Werkende solution/webapplicatie. Alle functionaliteit is gerealiseerd |  | 3h | 2015-10-08 | 2015-10-08 | 28 | 1.81d | 0d |  | Santino Bonora | 3h |
| 30 | 6.5 | Dataset |  | 3h | 2015-10-08 | 2015-10-09 | 29 | 1.81d | 0d |  | Santino Bonora; Tom Smits | 6h |
| 31 | 6.6 | Technische test is gemaakt |  | 3h | 2015-10-09 | 2015-10-12 | 30 | 1.81d | 0d |  | Steven Logghe | 3h |
| 32 | 6.7 | Technische test is uitgevoerd |  | 3h | 2015-10-12 | 2015-10-13 | 31 | 1.81d | 0d |  | Steven Logghe; Santino Bonora; Tom Smits | 9h |
| 33 | 6.8 | Functionele test is gemaakt |  | 3h | 2015-10-13 | 2015-10-14 | 32 | 1.81d | 0d |  | Steven Logghe | 3h |
| 34 | 6.9 | Functionele test is uitgevoerd |  | 3h | 2015-10-14 | 2015-10-14 | 33 | 1.81d |  |  | Steven Logghe; Santino Bonora; Tom Smits | 9h |
| 35 | 6.10 | deadline | milestone | 0d | 2015-10-14 | 2015-10-14 |  | 0d |  | must finish on 2015-10-14 |  |  |
| 36 | 7 | mijlpaal 3: Transition | milestone | 0d | 2015-09-07 | 2015-09-07 |  | 26.93d |  |  |  |  |
| 37 | 8 | **Transition Phase** |  | 6.13d | 2015-10-15 | 2015-11-03 | 25 | 0d |  |  |  | 66h |
| 38 | 8.1 | Acceptatietest is uitgevoerd bij (gebruiker van) de opdracht gever |  | 8h | 2015-10-15 | 2015-10-16 |  | 1.73d | 0d |  | Steven Logghe; Santino Bonora; Tom Smits | 24h |
| 39 | 8.2 | Gebruikershandleiding |  | 4h | 2015-10-19 | 2015-10-19 | 38 | 1.73d | 0d |  | Steven Logghe; Santino Bonora; Tom Smits | 12h |
| 40 | 8.3 | Projectrapport |  | 4h | 2015-10-20 | 2015-10-21 | 39 | 1.73d | 0d |  | Steven Logghe; Santino Bonora; Tom Smits | 12h |
| 41 | 8.4 | Teamrapport |  | 2h | 2015-10-21 | 2015-10-21 | 40 | 1.73d | 0d |  | Steven Logghe; Santino Bonora; Tom Smits | 6h |
| 42 | 8.5 | Presentatie |  | 2h | 2015-10-21 | 2015-10-22 | 41 | 1.73d | 0d |  | Steven Logghe; Santino Bonora; Tom Smits | 6h |
| 43 | 8.6 | Logboek Tijdregistratie |  | 2h | 2015-10-22 | 2015-10-22 | 42 | 1.73d |  |  | Steven Logghe; Santino Bonora; Tom Smits | 6h |
| 44 | 8.7 | Einde | milestone, manual | 0d | 2015-11-03 | 2015-11-03 |  |  |  |  |  |  |
